# GaleriaDevoto-SitioWeb-2014

Schedule from MS Project, 2014-05-19 to 2014-09-05, A marks actual dates.
Project para la construcción del sitio web para desktop y mobile (2014)

## Calendars

- Estándar: Mon-Fri 09:00-13:00, 15:00-19:00; Sat-Sun off. Exceptions (off unless hours are given): 2014-05-31 09:00-13:00, 15:00-19:00, 2014-06-07 09:00-13:00, 15:00-19:00.

## Resources

| Resource |
| --- |
| Miriam |
| Gustavo |
| Tamara |
| Dani |
| Gusta |
| Gonzalo |
| Tamara Miriam |

## Schedule

| ID | WBS | Task | Duration | Start | Finish | Predecessors | Complete | Remaining | Total slack | Free slack | Constraint | Resources | Work | Actual work |
| --- | --- | --- | --- | --- | --- | --- | --- | --- | --- | --- | --- | --- | --- | --- |
| 1 | 1 | **Tareas Comunes** | 78.5d? | 2014-05-19 09:00 A | 2014-09-02 13:00 |  | 36% | 50.24d? | 3d |  |  |  | 98h | 18h |
| 2 | 1.1 | Obtener listado completo de locales | 1h | 2014-05-19 09:00 A | 2014-05-19 10:00 A |  | 100% |  |  |  | start no earlier than 2014-05-19 09:00 | Miriam | 1h | 1h |
| 3 | 1.2 | Sacar fotos de locales | 6h | 2014-05-28 16:00 A | 2014-05-29 12:00 A |  | 100% |  |  |  | finish no earlier than 2014-05-28 18:00 | Gustavo | 6h | 6h |
| 4 | 1.3 | Sacar fotos de galería | 4h | 2014-05-28 12:00 A | 2014-05-28 18:00 A |  | 100% |  |  |  | finish no earlier than 2014-05-28 18:00 | Gustavo | 4h | 4h |
| 5 | 1.4 | Configurar el control de código | 1h | 2014-05-23 09:00 A | 2014-05-23 10:00 A |  | 100% |  |  |  | start no earlier than 2014-05-23 09:00 | Gustavo | 1h | 1h |
| 6 | 1.5 | Detectar user agent con asp.net y redirigir a sitio correcto | 2h | 2014-05-27 09:00 A | 2014-05-27 11:00 A |  | 100% |  |  |  | start no earlier than 2014-05-27 09:00 | Gustavo | 2h | 2h |
| 7 | 1.6 | Preparar el hosting Dattatec para funcionar con ASP.NET | 1h | 2014-05-27 09:00 A | 2014-05-27 10:00 A |  | 100% |  |  |  | start no earlier than 2014-05-27 09:00 | Gustavo | 1h | 1h |
| 8 | 1.7 | Corregir la calidad del logo | 1h | 2014-05-19 09:00 A | 2014-05-19 10:00 A |  | 100% |  |  |  |  | Tamara | 1h | 1h |
| 9 | 1.8 | Agregar Google Analytics en páginas que corresponde | 1h | 2014-05-19 09:00 A | 2014-05-19 10:00 A |  | 100% |  |  |  |  | Gustavo | 1h | 1h |
| 10 | 1.9 | Configurar redireccionamientos permanentes | 8h? | 2014-05-19 09:00 | 2014-05-19 19:00 |  |  |  | 81d |  |  | Gustavo | 8h |  |
| 11 | 1.10 | Prueba UAT (Aceptación de usuario) | 16h? | 2014-08-29 15:00 | 2014-09-02 13:00 | 14, 65, 67, 71 |  |  | 3d |  |  | Dani; Miriam; Tamara; Gustavo | 64h |  |
| 12 | 1.11 | Tomar snapshot de indicadores KPI (sitio web viejo) | 1h | 2014-08-28 09:00 A | 2014-08-28 10:00 A | 14 | 100% |  |  |  | start no earlier than 2014-05-21 09:00 | Gustavo | 1h | 1h |
| 13 | 1.12 | Actualizar documento de SEO | 8h? | 2014-08-28 10:00 | 2014-08-29 10:00 | 12 |  |  | 5.38d |  | start no earlier than 2014-05-19 09:00 | Gustavo | 8h |  |
| 14 | 2 | **Construcción de nuevo sitio web desktop** | 75d? | 2014-05-19 09:00 A | 2014-08-27 19:00 |  | 67% | 24.94d? | 4.5d | 1.5d |  |  | 412h | 251.5h |
| 15 | 2.1 | Realizar boceto de sitio web en programa de diseño gráfico | 3h | 2014-05-26 09:00 A | 2014-05-26 12:00 A |  | 100% |  |  |  | start no earlier than 2014-05-26 09:00 | Tamara | 3h | 3h |
| 16 | 2.2 | Definir colores | 3h | 2014-05-27 09:00 A | 2014-05-27 12:00 A |  | 100% |  |  |  | start no earlier than 2014-05-27 09:00 | Tamara | 3h | 3h |
| 17 | 2.3 | Definir tipo y tamaño de fuente | 1h | 2014-05-28 09:00 A | 2014-05-28 10:00 A |  | 100% |  |  |  | start no earlier than 2014-05-28 09:00 | Tamara | 1h | 1h |
| 18 | 2.4 | Definir resolución mínima sin scroll | 1h | 2014-05-29 09:00 A | 2014-05-29 10:00 A |  | 100% |  |  |  | start no earlier than 2014-05-29 09:00 | Gustavo; Tamara | 2h | 2h |
| 19 | 2.5 | Construir los iconos del menu | 3h | 2014-08-20 09:00 A | 2014-08-20 12:00 A |  | 100% |  |  |  | start no earlier than 2014-08-20 09:00 | Tamara | 3h | 3h |
| 20 | 2.6 | Construir un icono (favicon) | 1h | 2014-08-20 09:00 A | 2014-08-20 10:00 A |  | 100% |  |  |  | start no earlier than 2014-08-20 09:00 | Tamara | 1h | 1h |
| 21 | 2.7 | Prueba integral en navegadores | 8h? | 2014-08-27 09:00 | 2014-08-27 19:00 | 22, 55 |  |  | 4.5d |  |  | Gustavo | 8h |  |
| 22 | 2.8 | **Páginas web principales** | 71d? | 2014-05-19 09:00 A | 2014-08-21 19:00 |  | 83% | 11.83d? | 7.5d | 3d |  |  | 79h | 68h |
| 23 | 2.8.1 | **Home** | 60.25d | 2014-05-31 09:00 A | 2014-08-21 11:00 |  | 91% | 5.48d | 3.75d |  |  |  | 16h | 15h |
| 24 | 2.8.1.1 | Definir título | 1h | 2014-08-20 09:00 A | 2014-08-20 10:00 A |  | 100% |  |  |  | start no earlier than 2014-08-20 09:00 | Gustavo; Dani | 2h | 2h |
| 25 | 2.8.1.2 | Definir descripción | 1h | 2014-08-20 09:00 A | 2014-08-20 10:00 A |  | 100% |  |  |  | start no earlier than 2014-08-20 09:00 | Gustavo; Dani | 2h | 2h |
| 26 | 2.8.1.3 | Definir contenido estático y dinámico | 3h | 2014-05-31 09:00 A | 2014-05-31 12:00 A |  | 100% |  |  |  | start no earlier than 2014-05-31 09:00 | Gustavo; Tamara | 6h | 6h |
| 27 | 2.8.1.4 | Construir MasterPage Principal | 4h | 2014-06-03 09:00 A | 2014-06-03 13:00 A | 26 | 100% |  |  |  | start no earlier than 2014-06-03 09:00 | Gustavo | 4h | 4h |
| 28 | 2.8.1.5 | Construir página | 2h | 2014-08-21 09:00 A | 2014-08-21 11:00 | 27 | 50% | 1h | 3.75d |  | start no earlier than 2014-08-21 09:00 | Tamara | 2h | 1h |

| ID | WBS | Task | Duration | Start | Finish | Complete | Total slack | Constraint | Resources | Work | Actual work |
| --- | --- | --- | --- | --- | --- | --- | --- | --- | --- | --- | --- |
| 29 | 2.8.2 | **Contacto** | 13.12d | 2014-05-19 09:00 A | 2014-06-04 10:00 A | 100% |  |  |  | 17h | 17h |
| 30 | 2.8.2.1 | Definir título | 1h | 2014-06-04 09:00 A | 2014-06-04 10:00 A | 100% |  | start no earlier than 2014-06-04 09:00 | Gustavo; Dani | 2h | 2h |
| 31 | 2.8.2.2 | Definir descripción | 1h | 2014-06-04 09:00 A | 2014-06-04 10:00 A | 100% |  | start no earlier than 2014-06-04 09:00 | Gustavo; Dani | 2h | 2h |
| 32 | 2.8.2.3 | Agregar la información que aparece en página ubicación | 2h | 2014-06-02 09:00 A | 2014-06-02 11:00 A | 100% |  | start no earlier than 2014-06-02 09:00 | Gustavo | 2h | 2h |
| 33 | 2.8.2.4 | Actualizar transporte público | 1h | 2014-06-02 09:00 A | 2014-06-02 10:00 A | 100% |  | start no earlier than 2014-06-02 09:00 | Gustavo | 1h | 1h |
| 34 | 2.8.2.5 | Agregar link a fan page Facebook | 1h | 2014-06-02 09:00 A | 2014-06-02 10:00 A | 100% |  | start no earlier than 2014-06-02 09:00 | Gustavo | 1h | 1h |
| 35 | 2.8.2.6 | Aclarar horarios de atención al público y de administración | 1h | 2014-06-02 09:00 A | 2014-06-02 10:00 A | 100% |  | start no earlier than 2014-06-02 09:00 | Gustavo | 1h | 1h |
| 36 | 2.8.2.7 | Construir página | 8h | 2014-05-19 09:00 A | 2014-05-19 19:00 A | 100% |  |  | Gustavo | 8h | 8h |
| 37 | 2.8.3 | **Villa Devoto** | 0.5d | 2014-08-20 09:00 A | 2014-08-20 13:00 A | 100% |  |  |  | 10h | 10h |
| 38 | 2.8.3.1 | Definir título | 1h | 2014-08-20 09:00 A | 2014-08-20 10:00 A | 100% |  | start no earlier than 2014-08-20 09:00 | Gustavo; Dani | 2h | 2h |
| 39 | 2.8.3.2 | Definir descripción | 1h | 2014-08-20 09:00 A | 2014-08-20 10:00 A | 100% |  | start no earlier than 2014-08-20 09:00 | Gustavo; Dani | 2h | 2h |
| 40 | 2.8.3.3 | Agregar direcciones de los lugares | 4h | 2014-08-20 09:00 A | 2014-08-20 13:00 A | 100% |  | start no earlier than 2014-08-20 09:00 | Gustavo | 4h | 4h |
| 41 | 2.8.3.4 | Construir página | 2h | 2014-08-20 09:00 A | 2014-08-20 11:00 A | 100% |  | start no earlier than 2014-08-20 09:00 | Gustavo | 2h | 2h |
| 42 | 2.8.4 | **Galeria Devoto** | 0.25d | 2014-08-20 09:00 A | 2014-08-20 11:00 A | 100% |  |  |  | 6h | 6h |
| 43 | 2.8.4.1 | Definir título | 1h | 2014-08-20 09:00 A | 2014-08-20 10:00 A | 100% |  | start no earlier than 2014-08-20 09:00 | Gustavo; Dani | 2h | 2h |
| 44 | 2.8.4.2 | Definir descripción | 1h | 2014-08-20 09:00 A | 2014-08-20 10:00 A | 100% |  | start no earlier than 2014-08-20 09:00 | Gustavo; Dani | 2h | 2h |
| 45 | 2.8.4.3 | Construir página | 2h | 2014-08-20 09:00 A | 2014-08-20 11:00 A | 100% |  | start no earlier than 2014-08-20 09:00 | Gustavo | 2h | 2h |
| 46 | 2.8.5 | **Locales** | 2d | 2014-08-20 09:00 A | 2014-08-21 19:00 A | 100% |  |  |  | 20h | 20h |
| 47 | 2.8.5.1 | Definir título | 1h | 2014-08-20 09:00 A | 2014-08-20 10:00 A | 100% |  | start no earlier than 2014-08-20 09:00 | Gustavo; Dani | 2h | 2h |
| 48 | 2.8.5.2 | Definir descripción | 1h | 2014-08-20 09:00 A | 2014-08-20 10:00 A | 100% |  | start no earlier than 2014-08-20 09:00 | Gustavo; Dani | 2h | 2h |
| 49 | 2.8.5.3 | Construir página | 16h | 2014-08-20 09:00 A | 2014-08-21 19:00 A | 100% |  | start no earlier than 2014-08-20 09:00 | Gustavo | 16h | 16h |
| 50 | 2.8.6 | **Error 404 (Not Found)** | 0.5d? | 2014-08-20 09:00 | 2014-08-20 13:00 |  | 4.5d |  |  | 10h |  |
| 51 | 2.8.6.1 | Definir estructura | 4h? | 2014-08-20 09:00 | 2014-08-20 13:00 |  | 4.5d | start no earlier than 2014-08-20 09:00 | Tamara | 4h |  |
| 52 | 2.8.6.2 | Definir imagen | 2h? | 2014-08-20 09:00 | 2014-08-20 11:00 |  | 4.75d | start no earlier than 2014-08-20 09:00 | Tamara | 2h |  |
| 53 | 2.8.6.3 | Definir texto | 2h? | 2014-08-20 09:00 | 2014-08-20 11:00 |  | 4.75d | start no earlier than 2014-08-20 09:00 | Tamara | 2h |  |
| 54 | 2.8.6.4 | Construir página | 2h? | 2014-08-20 09:00 | 2014-08-20 11:00 |  | 4.75d | start no earlier than 2014-08-20 09:00 | Tamara | 2h |  |

| ID | WBS | Task | Duration | Start | Finish | Predecessors | Complete | Remaining | Total slack | Free slack | Constraint | Resources | Work | Actual work |
| --- | --- | --- | --- | --- | --- | --- | --- | --- | --- | --- | --- | --- | --- | --- |
| 55 | 2.9 | **Página de cada local** | 74d? | 2014-05-19 09:00 A | 2014-08-26 19:00 |  | 59% | 30.12d? | 4.5d | 0d |  |  | 312h | 170.5h |
| 56 | 2.9.1 | Obtener descripción detallada del local | 40h | 2014-05-19 09:00 A | 2014-05-23 19:00 A |  | 100% |  |  |  |  | Gustavo; Tamara; Miriam | 120h | 120h |
| 57 | 2.9.2 | Obtener productos promocionados por local | 6h? | 2014-05-19 09:00 A | 2014-05-19 17:00 |  | 25% | 4.5h? | 77.75d |  |  | Gustavo; Tamara; Miriam | 18h | 4.5h |
| 58 | 2.9.3 | Definir título | 4h | 2014-08-20 09:00 A | 2014-08-20 13:00 A |  | 100% |  |  |  | start no earlier than 2014-08-20 09:00 | Gustavo; Tamara; Dani | 12h | 12h |
| 59 | 2.9.4 | Definir descripción | 40h? | 2014-08-20 09:00 | 2014-08-26 19:00 |  |  |  | 4.5d |  | start no earlier than 2014-08-20 09:00 | Gustavo; Tamara; Dani | 120h |  |
| 60 | 2.9.5 | Definir estructura de página | 3h | 2014-06-05 09:00 A | 2014-06-05 12:00 A |  | 100% |  |  |  | start no earlier than 2014-06-05 09:00 | Gustavo; Tamara | 6h | 6h |
| 61 | 2.9.6 | Construir MasterPage Local | 4h | 2014-06-06 09:00 A | 2014-06-06 13:00 A | 60 | 100% |  |  |  | start no earlier than 2014-06-06 09:00 | Gustavo | 4h | 4h |
| 62 | 2.9.7 | Buscar un slider de imágenes y aprender a usarlo | 8h | 2014-06-07 09:00 A | 2014-06-07 19:00 A |  | 100% |  |  |  | start no earlier than 2014-06-07 09:00 | Gustavo | 8h | 8h |
| 63 | 2.9.8 | Cambiar el tamaño de las imágenes del slider a 640x300 px | 8h | 2014-05-19 09:00 A | 2014-05-19 19:00 A |  | 100% |  |  |  |  | Tamara | 8h | 8h |
| 64 | 2.9.9 | Construir páginas | 16h | 2014-08-20 09:00 A | 2014-08-21 19:00 | 61 | 50% | 8h | 3d |  | start no earlier than 2014-06-07 09:00 | Tamara | 16h | 8h |
| 65 | 3 | **Construcción de nuevo sitio web mobile** | 0.5d | 2014-08-28 09:00 A | 2014-08-28 13:00 A | 14 | 100% |  |  |  |  |  | 12h | 12h |
| 66 | 3.1 | Prueba integral en navegadores mobile | 4h | 2014-08-28 09:00 A | 2014-08-28 13:00 A |  | 100% |  |  |  | start no earlier than 2014-07-04 09:00 | Gustavo; Tamara; Miriam | 12h | 12h |
| 67 | 4 | **Actualización de datos en Google Places** | 0.25d | 2014-05-19 09:00 A | 2014-05-19 11:00 A |  | 100% |  |  |  |  |  | 5h | 5h |
| 68 | 4.1 | Pedir descripción principal de ficha | 2h | 2014-05-19 09:00 A | 2014-05-19 11:00 A |  | 100% |  |  |  |  | Gustavo | 2h | 2h |
| 69 | 4.2 | Sacar el télefono de la ficha | 1h | 2014-05-19 09:00 A | 2014-05-19 10:00 A |  | 100% |  |  |  |  | Gustavo | 1h | 1h |
| 70 | 4.3 | Dar de alta ficha e investigar perfil de Google + | 2h | 2014-05-19 09:00 A | 2014-05-19 11:00 A |  | 100% |  |  |  |  | Gustavo | 2h | 2h |
| 71 | 5 | **Fan page Facebook** | 1d? | 2014-08-28 15:00 A | 2014-08-29 13:00 | 65 | 14% | 0.86d? | 0d |  |  |  | 22h | 2h |
| 72 | 5.1 | Subir Fotos | 1h | 2014-08-28 15:00 A | 2014-08-28 16:00 A |  | 100% |  |  |  |  | Tamara | 1h | 1h |
| 73 | 5.2 | Escribir descripción y proposito de fan page | 1h | 2014-08-28 15:00 A | 2014-08-28 16:00 A |  | 100% |  |  |  | start no earlier than 2014-07-08 09:00 | Tamara | 1h | 1h |
| 74 | 5.3 | Comentar a Gonzalo el proposito de la fan page | 4h? | 2014-08-28 15:00 | 2014-08-28 19:00 |  |  |  | 0.5d |  | start no earlier than 2014-07-09 09:00 | Gustavo | 4h |  |
| 75 | 5.4 | Subir promociones | 8h? | 2014-08-28 15:00 | 2014-08-29 13:00 |  |  |  | 0d |  | start no earlier than 2014-07-10 09:00 | Gonzalo; Gustavo | 16h |  |
| 76 | 6 | **Iteración 2** | 5d? | 2014-08-29 15:00 | 2014-09-05 13:00 | 71 |  |  | 0d |  |  |  | 92h |  |
| 77 | 6.1 | Validar código HTML | 8h? | 2014-08-29 15:00 | 2014-09-01 13:00 | 14, 65 |  |  | 3.5d | 0d | start no earlier than 2014-05-21 09:00 | Gustavo | 8h |  |
| 78 | 6.2 | Validar código CSS | 8h? | 2014-08-29 15:00 | 2014-09-01 13:00 | 14, 65 |  |  | 3.5d | 0d | start no earlier than 2014-05-21 09:00 | Gustavo | 8h |  |
| 79 | 6.3 | Agregar validaciones HTML y CSS exitosas al sitio web | 4h? | 2014-09-01 15:00 | 2014-09-01 19:00 | 77, 78 |  |  | 3.5d |  | start no earlier than 2014-05-21 09:00 | Gustavo | 4h |  |
| 80 | 6.4 | Agregar sitio a Yelp | 8h? | 2014-08-29 15:00 | 2014-09-01 13:00 | 14, 65 |  |  | 4d |  |  | Gustavo | 8h |  |
| 81 | 6.5 | Mejorar la velocidad de descarga de la página de contacto | 8h? | 2014-08-29 15:00 | 2014-09-01 13:00 |  |  |  | 4d |  |  | Gustavo | 8h |  |
| 82 | 6.6 | Completar páginas de cada local | 40h? | 2014-08-29 15:00 | 2014-09-05 13:00 |  |  |  | 0d |  |  | Gustavo | 40h |  |
| 83 | 6.7 | Agregar los locales relacionados en la página de cada local | 8h? | 2014-08-29 15:00 | 2014-09-01 13:00 |  |  |  | 4d |  |  | Gustavo; Tamara | 16h |  |
